| task_id | phase | workstream | work_group | task | description | priority | status | start_date | deadline | duration_days | effort_person_days | deliverable | source_page | gate_or_milestone | risk_note |
| --- | --- | --- | --- | --- | --- | --- | --- | --- | --- | --- | --- | --- | --- | --- | --- |
| 1.1 | 1. Định nghĩa sản phẩm & trải nghiệm người dùng | Sản phẩm | Chiến lược sản phẩm | Cập nhật luận điểm sản phẩm | Viết lời hứa sản phẩm, ICP, wedge, nội dung không làm theo bằng chứng mới; lưu giả định bị bác bỏ. | P0 | Chưa bắt đầu | 2026-10-26 | 2026-10-27 | 2 | 1.0 | Luận điểm sản phẩm v0.2 | 1 |  |  |
| 1.2 | 1. Định nghĩa sản phẩm & trải nghiệm người dùng | Sản phẩm | Phạm vi MVP | Chốt kết quả MVP | MVP phải chứng minh vòng: Pancake Hội thoại -> Bàn giao -> Sales theo dõi tiếp -> Kết quả -> Phản hồi cho Quản lý. | P0 | Chưa bắt đầu | 2026-10-27 | 2026-10-28 | 2 | 1.0 | MVP kết quả trạng tháiment | 1 |  |  |
| 1.3 | 1. Định nghĩa sản phẩm & trải nghiệm người dùng | Sản phẩm | Phạm vi MVP | Lập Bắt buộc / Nên có / Để sau / Không làm | Bắt buộc: connector, lead/handoff, sales queue, theo dõi tiếp, kết quả, phễu. Để sau: AI nâng cao, kết nối nhiều nền tảng quảng cáo, đối chiếu sự thật CRM, định tuyến. | P0 | Chưa bắt đầu | 2026-10-28 | 2026-10-30 | 3 | 1.5 | Ma trận phạm vi | 1 |  |  |
| 1.4 | 1. Định nghĩa sản phẩm & trải nghiệm người dùng | Sản phẩm | Quy tắc nghiệp vụ | Định nghĩa đối tượng cốt lõi & ngữ nghĩa | Phác thảo Khách hàng, Lead/Lần thu hút khách, Bàn giao, Người phụ trách, Hoạt động, Cam kết, Kết quả, Doanh thu, Bằng chứng; Khách hàng != Lead. | P0 | Chưa bắt đầu | 2026-10-28 | 2026-11-03 | 7 | 3.0 | Domain ngữ nghĩa v0.1 | 1 |  |  |
| 1.5 | 1. Định nghĩa sản phẩm & trải nghiệm người dùng | Sản phẩm | Đo lường | Định nghĩa dữ liệu Sales tối thiểu bắt buộc | Chốt dữ liệu tối thiểu bắt buộc: kết quả liên hệ, đạt/không đạt chuẩn, trạng thái, Won/Lost, doanh thu/lý do mất; kiểm tra ma sát nhập liệu. | P0 | Chưa bắt đầu | 2026-10-29 | 2026-11-03 | 6 | 1.5 | Hợp đồng dữ liệu tối thiểu | 1 |  |  |
| 1.6 | 1. Định nghĩa sản phẩm & trải nghiệm người dùng | Sản phẩm | Đo lường | Thiết kế Thiết lập sẵn sàng đo lường | Luồng cấu hình định nghĩa Lead/Đạt chuẩn/Không liên hệ được/Won/Lost/Doanh thu và SLA theo từng khách hàng. | P1 | Chưa bắt đầu | 2026-11-02 | 2026-11-06 | 5 | 2.0 | Đặc tả thiết lập đo lường | 1 |  |  |
| 1.7 | 1. Định nghĩa sản phẩm & trải nghiệm người dùng | Thiết kế | Kiến trúc thông tin | Thiết kế bản đồ không gian làm việc theo vai trò | Marketing tiếp tục làm việc gần Pancake; hàng đợi công việc thương mại của Sales; màn hình chú ý/phễu của Quản lý; thiết lập Quản trị. | P0 | Chưa bắt đầu | 2026-10-29 | 2026-11-03 | 6 | 2.0 | Kiến trúc thông tin | 1 |  |  |
| 1.8 | 1. Định nghĩa sản phẩm & trải nghiệm người dùng | Thiết kế | Luồng người dùng | Vẽ Marketing -> luồng bàn giao | Từ hội thoại tới đạt chuẩn/tạo Lead/giao Sales; hiển thị nguồn/bối cảnh; xử lý trùng/khách quay lại. | P0 | Chưa bắt đầu | 2026-11-02 | 2026-11-06 | 5 | 3.0 | Luồng bàn giao | 1 |  |  |
| 1.9 | 1. Định nghĩa sản phẩm & trải nghiệm người dùng | Thiết kế | Luồng người dùng | Vẽ luồng Lead của Sales | Mới -> nhận -> liên hệ -> hành động tiếp -> theo dõi tiếp - > kết quả; tối thiểu nhập trường dữ liệu. | P0 | Chưa bắt đầu | 2026-11-02 | 2026-11-06 | 5 | 3.0 | Luồng Sales | 1 |  |  |
| 1.10 | 1. Định nghĩa sản phẩm & trải nghiệm người dùng | Thiết kế | Luồng người dùng | Vẽ luồng Quản lý | Funnel + lớp cảnh báo: handoff SLA, quá hạn, chưa liên hệ, Won/Lost; xem sâu bằng chứng. | P1 | Chưa bắt đầu | 2026-11-04 | 2026-11-09 | 6 | 2.5 | luồng Quản lý | 1 |  |  |
| 1.11 | 1. Định nghĩa sản phẩm & trải nghiệm người dùng | Sản phẩm | Sự kiện thương mại (Commercial Event) | Thiết kế Sự kiện thương mại v0 | Chọn 5-8 sự kiện MVP có bằng chứng + độ tin cậy; ưu tiên cam kết/đạt chuẩn/liên hệ/kết quả, chưa tự động thay đổi rủi ro cao. | P1 | Chưa bắt đầu | 2026-11-03 | 2026-11-09 | 7 | 2.0 | Đặc tả Sự kiện thương mại v0 | 1 |  |  |
| 1.12 | 1. Định nghĩa sản phẩm & trải nghiệm người dùng | Thiết kế | Mẫu thử | Dựng mẫu thử tương tác v0 | Mẫu thử cho 3 vai trò chính, tập trung một câu chuyện Lead đầu-cuối; không trau chuốt giao diện quá mức. | P0 | Chưa bắt đầu | 2026-11-06 | 2026-11-12 | 7 | 4.0 | Mẫu thử tương tác | 1 |  |  |
| 1.13 | 1. Định nghĩa sản phẩm & trải nghiệm người dùng | Nghiên cứu | Khả năng sử dụng | Kiểm thử mẫu thử với 5-7 người dùng | Tối thiểu 2 Sales, 2 Marketing, 2 Quản lý; đo khả năng hiểu, ma sát nhập liệu, thiếu bối cảnh và độ tin cậy. | P0 | Chưa bắt đầu | 2026-11-12 | 2026-11-17 | 6 | 3.0 | Kết quả kiểm thử sử dụng | 1 |  |  |
| 1.14 | 1. Định nghĩa sản phẩm & trải nghiệm người dùng | Sản phẩm | Phạm vi MVP | Sửa phạm vi theo khả dụng + khả thi | Cắt những flow khó hiểu/giá trị thấp; giữ tính đầy đủ đầu-cuối. | P0 | Chưa bắt đầu | 2026-11-18 | 2026-11-19 | 2 | 1.0 | MVP phạm vi candidate | 1 | Cổng 2 |  |
| 1.15 | 1. Định nghĩa sản phẩm & trải nghiệm người dùng | Sản phẩm | Đặc tả yêu cầu sản phẩm (PRD) | Chốt PRD MVP v0.1 | Câu chuyện người dùng, quy tắc, tiêu chí chấp nhận, sự kiện phân tích, trường hợp biên, nội dung loại trừ rõ ràng. | P0 | Chưa bắt đầu | 2026-11-19 | 2026-11-20 | 2 | 2.0 | PRD MVP v0.1 | 1 | Cổng 2 - 20/11 |  |
| 2.1 | 2. Khả thi kỹ thuật & kiến trúc | Kỹ thuật | Tích hợp Pancake | Xác minh lại Pancake API/điều khoản hiện tại | Xác nhận khả năng đọc hội thoại/khách hàng/tin nhắn/tag/giao việc, phạm vi token, giới hạn tốc độ, webhook/polling và ranh giới thương mại/quyền gửi tin nhắn. | P0 | Chưa bắt đầu | 2026-10-19 | 2026-10-27 | 9 | 3.0 | Ma trận khả năng Pancake | 1 |  | Không hứa original-channel send nếu terms/API chưa xác nhận. |
| 2.2 | 2. Khả thi kỹ thuật & kiến trúc | Kỹ thuật | Tích hợp Pancake | Xây dựng thử nghiệm Pancake chỉ đọc | Kết nối trang thử nghiệm; nạp hội thoại/khách hàng/tin nhắn mẫu và đo độ ổn định. | P0 | Chưa bắt đầu | 2026-10-26 | 2026-11-04 | 10 | 5.0 | Thử nghiệm nạp dữ liệu chạy được | 1 |  |  |
| 2.3 | 2. Khả thi kỹ thuật & kiến trúc | Kỹ thuật | Độ ổn định tích hợp | Đánh giá webhook và polling | Thiết kế chiến lược đồng bộ, thử lại, con trỏ/điểm lưu, sự kiện trùng và đối soát. | P0 | Chưa bắt đầu | 2026-11-02 | 2026-11-06 | 5 | 2.0 | Quyết định kiến trúc đồng bộ | 1 |  |  |
| 2.4 | 2. Khả thi kỹ thuật & kiến trúc | Kỹ thuật | Bảo mật | Thiết kế bảo mật token/thông tin xác thực | Lưu trữ/mã hoá, cách ly dữ liệu khách hàng, xoay vòng/thu hồi, kiểm toán quyền truy cập kết nối. | P0 | Chưa bắt đầu | 2026-10-28 | 2026-11-05 | 9 | 2.0 | Thiết kế thông tin xác thực | 1 |  |  |
| 2.5 | 2. Khả thi kỹ thuật & kiến trúc | Kỹ thuật | Kiến trúc nghiệp vụ | Thiết kế mô hình tương tác trung lập nhà cung cấp | Thực thể nội bộ dùng Tương tác/Khách hàng/Lead/Sự kiện; Pancake là bộ chuyển đổi. Tránh khóa miền nghiệp vụ vào đối tượng Pancake. | P0 | Chưa bắt đầu | 2026-11-03 | 2026-11-09 | 7 | 3.0 | Mô hình nghiệp vụ v0.1 | 1 |  |  |
| 2.6 | 2. Khả thi kỹ thuật & kiến trúc | Kỹ thuật | Định danh | Thiết kế Khách hàng chuẩn + Lead ID | Quy tắc cho ID điện thoại/mạng xã hội, Lead/Lần thu hút khách ổn định, trùng/mở lại; luồng sửa thủ công. | P0 | Chưa bắt đầu | 2026-11-05 | 2026-11-11 | 7 | 3.0 | Thiết kế định danh/Lead ID | 1 |  |  |
| 2.7 | 2. Khả thi kỹ thuật & kiến trúc | Kỹ thuật | Đa khách hàng (multi-tenant) | Thiết kế kiến trúc đa khách hàng sẵn sàng SaaS | ID khách hàng, ranh giới tổ chức/người dùng/vai trò, phân vùng dữ liệu; chưa xây phần thanh toán/tự phục vụ. | P0 | Chưa bắt đầu | 2026-11-05 | 2026-11-11 | 7 | 2.0 | Kiến trúc đa khách hàng | 1 |  |  |
| 2.8 | 2. Khả thi kỹ thuật & kiến trúc | Kỹ thuật | Phân quyền (RBAC) | Thiết kế phân quyền theo Lead | Marketing/Quản trị có quyền rộng hơn; Sales chỉ truy cập Lead được giao; Quản lý có khả năng quan sát. Không yêu cầu Sales có quyền toàn trang trong ứng dụng. | P0 | Chưa bắt đầu | 2026-11-09 | 2026-11-13 | 5 | 2.0 | Ma trận phân quyền (RBAC) | 1 |  |  |
| 2.9 | 2. Khả thi kỹ thuật & kiến trúc | Kỹ thuật | Khả thi AI | Thử nghiệm nhanh trích xuất thương mại | Kiểm thử tóm tắt + nhu cầu/phản đối/cam kết trên tin nhắn mẫu; lưu đoạn bằng chứng và độ tin cậy. | P1 | Chưa bắt đầu | 2026-11-04 | 2026-11-13 | 10 | 5.0 | Mốc đánh giá AI trích xuất | 1 |  |  |
| 2.10 | 2. Khả thi kỹ thuật & kiến trúc | Kỹ thuật | Khả thi AI | Định nghĩa chính sách người duyệt | Xác định sự kiện nào tự động, sự kiện nào chỉ gợi ý; đánh giá chi phí báo sai; yêu cầu có kiểm toán/hoàn tác. | P1 | Chưa bắt đầu | 2026-11-12 | 2026-11-16 | 5 | 1.5 | Chính sách hành động AI | 1 |  |  |
| 2.11 | 2. Khả thi kỹ thuật & kiến trúc | Kỹ thuật | Đo lường | Đánh giá khả thi liên kết nguồn thu hút khách Meta | Xác định định danh thực sự có sẵn từ Pancake/Meta để nối Campaign/Ad -> Hội thoại -> Lead; kiểm thử độ bao phủ xác định chắc chắn. | P0 | Chưa bắt đầu | 2026-11-05 | 2026-11-13 | 9 | 4.0 | Thử nghiệm liên kết nguồn Meta | 1 |  |  |
| 2.12 | 2. Khả thi kỹ thuật & kiến trúc | Kỹ thuật | Mở rộng nguồn thu hút khách | Chỉ kiểm tra khả thi kết nối TikTok/Google | Không xây dựng; chỉ xác minh xác thực/ID báo cáo/chi phí và khả năng nối dòng liên kết nguồn để tránh ngõ cụt thiết kế. | P2 | Chưa bắt đầu | 2026-11-10 | 2026-11-17 | 8 | 2.0 | Ghi chú khả thi kết nối tương lai | 1 |  |  |
| 2.13 | 2. Khả thi kỹ thuật & kiến trúc | Kỹ thuật | Sức khoẻ dữ liệu | Thiết kế mô hình Đã biết/Suy luận/Không biết | Mỗi liên kết có phương pháp/độ tin cậy; tính độ bao phủ; hiển thị rõ phần thiếu kết quả/nguồn. | P1 | Chưa bắt đầu | 2026-11-11 | 2026-11-17 | 7 | 2.0 | Mô hình sức khoẻ dữ liệu | 1 |  |  |
| 2.14 | 2. Khả thi kỹ thuật & kiến trúc | Kỹ thuật | Kiến trúc | Rà soát kiến trúc + ước lượng công sức | Rà soát đầu-cuối, xác định trở ngại cứng, ước lượng xây dựng theo khối công việc và xác nhận phần để sau. | P0 | Chưa bắt đầu | 2026-11-17 | 2026-11-19 | 3 | 2.0 | Kiến trúc + ước lượng | 1 | Cổng 2 |  |
| 2.15 | 2. Khả thi kỹ thuật & kiến trúc | Kỹ thuật | Quyết định qua cổng | Cổng 2: Xây / Thu hẹp / Thử nghiệm lại | Chỉ tiếp tục nếu nạp dữ liệu Pancake + định danh + dòng liên kết đầu-cuối đủ khả thi cho Pilot và phạm vi MVP phù hợp năng lực đội ngũ. | P0 | Chưa bắt đầu | 2026-11-20 | 2026-11-20 | 1 | 1.0 | Quyết định xây dựng | 1 | Cổng 2 - 20/11 |  |
| 3.1 | 3. Xây dựng MVP — Nền tảng | Kỹ thuật | Thiết lập quy trình phát hành | Kho mã/CI-CD/môi trường | Thiết lập dev/staging/prod nhẹ, rà soát mã, chuyển đổi dữ liệu, bí mật hệ thống và hoàn tác phát hành cơ bản. | P0 | Chưa bắt đầu | 2026-11-23 | 2026-11-27 | 5 | 3.0 | Quy trình phát hành | 1 |  |  |
| 3.2 | 3. Xây dựng MVP — Nền tảng | Kỹ thuật | Giám sát hệ thống | Mốc giám sát log/lỗi | Log có cấu trúc, bảng lỗi tích hợp, ID yêu cầu, khả năng quan sát job đồng bộ. | P1 | Chưa bắt đầu | 2026-11-25 | 2026-12-02 | 8 | 2.0 | Observability hiện trạng | 1 |  |  |
| 3.3 | 3. Xây dựng MVP — Nền tảng | Kỹ thuật | Khách hàng/Xác thực | Lõi tổ chức/người dùng/đăng nhập | Tạo không gian khách hàng thủ công; mời/đăng nhập; chưa tự đăng ký/thanh toán. | P0 | Chưa bắt đầu | 2026-11-23 | 2026-12-04 | 12 | 6.0 | Module tổ chức/xác thực | 1 |  |  |
| 3.4 | 3. Xây dựng MVP — Nền tảng | Kỹ thuật | Phân quyền (RBAC) | Phân quyền vai trò + phạm vi Lead | Implement Admin/Marketing/Sales/Quản lý access và phạm vi Lead được giao. | P0 | Chưa bắt đầu | 2026-12-01 | 2026-12-09 | 9 | 4.0 | Phân quyền RBAC đã áp dụng | 1 |  |  |
| 3.5 | 3. Xây dựng MVP — Nền tảng | Kỹ thuật | Kết nối Pancake | Xác thực/thiết lập kết nối | Cấu hình quản trị nội bộ to connect Pancake và kiểm tra thông tin xác thực. | P0 | Chưa bắt đầu | 2026-11-30 | 2026-12-07 | 8 | 4.0 | Luồng thiết lập kết nối | 1 |  |  |
| 3.6 | 3. Xây dựng MVP — Nền tảng | Kỹ thuật | Kết nối Pancake | Nạp hội thoại/khách hàng | Đồng bộ đủ mức vận hành thật cho các đối tượng cần thiết; có điểm lưu, thử lại và loại trùng. | P0 | Chưa bắt đầu | 2026-12-03 | 2026-12-16 | 14 | 8.0 | Nạp dữ liệu ổn định | 1 |  |  |
| 3.7 | 3. Xây dựng MVP — Nền tảng | Kỹ thuật | Mô hình dữ liệu | Customer/Lead/Handoff cấu trúc dữ liệu | Implement canonical Customer, Lead, Handoff, owner, dòng liên kết nguồn, timestamps. | P0 | Chưa bắt đầu | 2026-11-30 | 2026-12-11 | 12 | 6.0 | Mô hình dữ liệu cốt lõi | 1 |  |  |
| 3.8 | 3. Xây dựng MVP — Nền tảng | Kỹ thuật | Mô hình dữ liệu | Activity/Outcome/Revenue cấu trúc dữ liệu | Contact attempts, theo dõi tiếp, trạng thái, Won/Lost, lost reason, doanh thu; thay đổi có kiểm toán. | P0 | Chưa bắt đầu | 2026-12-07 | 2026-12-16 | 10 | 5.0 | Mô hình dữ liệu thực thi | 1 |  |  |
| 3.9 | 3. Xây dựng MVP — Nền tảng | Kỹ thuật | Nhật ký kiểm toán | Audit trail hiện trạng | Ghi ai làm gì, khi nào, từ nguồn nào cho các thay đổi trạng thái/kết quả/giao việc; hỗ trợ hoàn tác với các thay đổi đơn giản. | P1 | Chưa bắt đầu | 2026-12-14 | 2026-12-21 | 8 | 3.0 | Nhật ký kiểm toán | 1 |  |  |
| 3.10 | 3. Xây dựng MVP — Nền tảng | Kỹ thuật | Cấu hình quản trị | Cấu hình định nghĩa đo lường | Cấu hình quản trị nội bộ cho Đạt chuẩn, Không liên hệ được, Won, lý do Lost và SLA. | P1 | Chưa bắt đầu | 2026-12-07 | 2026-12-18 | 12 | 5.0 | Cấu hình đo lường v0 | 2 |  |  |
| 4.1 | 4. Xây dựng MVP — Luồng cốt lõi | Sản phẩm/Kỹ thuật | Marketing | Tạo Lead từ hội thoại | Từ hội thoại đã đồng bộ, tạo/đánh dấu Lead đạt chuẩn đồng thời giữ nguồn, bối cảnh và định danh khách hàng. | P0 | Chưa bắt đầu | 2026-12-14 | 2026-12-23 | 10 | 5.0 | Luồng tạo Lead | 2 |  |  |
| 4.2 | 4. Xây dựng MVP — Luồng cốt lõi | Sản phẩm/Kỹ thuật | Bàn giao | Marketing -> Sales handoff | Assign Sales, create handoff timestamp/SLA, package bối cảnh, tránh bàn giao trùng. | P0 | Chưa bắt đầu | 2026-12-21 | 2027-01-05 | 16 | 6.0 | Luồng bàn giao | 2 |  |  |
| 4.3 | 4. Xây dựng MVP — Luồng cốt lõi | Sản phẩm/Kỹ thuật | Không gian làm việc Sales | Danh sách Lead của tôi | Chế độ xem: Mới, đến hạn hôm nay, quá hạn, chờ khách, không liên hệ được; hỗ trợ xem nhanh ưu tiên. | P0 | Chưa bắt đầu | 2026-12-28 | 2027-01-08 | 12 | 6.0 | Hàng đợi Sales | 2 |  |  |
| 4.4 | 4. Xây dựng MVP — Luồng cốt lõi | Sản phẩm/Kỹ thuật | Không gian làm việc Sales | Chi tiết Lead + bối cảnh | Hiển thị tóm tắt/nguồn/kênh gốc/bằng chứng hội thoại/dòng thời gian thương mại/hành động tiếp theo. | P0 | Chưa bắt đầu | 2027-01-04 | 2027-01-13 | 10 | 5.0 | Chi tiết Lead | 2 |  |  |
| 4.5 | 4. Xây dựng MVP — Luồng cốt lõi | Sản phẩm/Kỹ thuật | Thực thi Sales | Nhận Lead/kết quả liên hệ | Sales nhận Lead; ghi Đã liên hệ/Không nghe máy/Không hợp lệ/Khác kèm thời gian; tối thiểu thao tác. | P0 | Chưa bắt đầu | 2027-01-04 | 2027-01-12 | 9 | 4.0 | Luồng kết quả liên hệ | 2 |  |  |
| 4.6 | 4. Xây dựng MVP — Luồng cốt lõi | Sản phẩm/Kỹ thuật | Theo dõi tiếp | Hành động tiếp + hạn | Tạo hành động tiếp theo và hạn; cho phép hoàn thành/dời lịch; hiển thị việc quá hạn và người phụ trách. | P0 | Chưa bắt đầu | 2027-01-06 | 2027-01-15 | 10 | 5.0 | Lõi theo dõi tiếp | 2 |  |  |
| 4.7 | 4. Xây dựng MVP — Luồng cốt lõi | Sản phẩm/Kỹ thuật | Kết quả | Ghi nhận Đạt chuẩn/Won/Lost | Ghi nhận trạng thái/kết quả, lý do mất và doanh thu; kiểm tra theo cấu hình đo lường. | P0 | Chưa bắt đầu | 2027-01-08 | 2027-01-18 | 11 | 5.0 | Ghi nhận kết quả | 2 |  |  |
| 4.8 | 4. Xây dựng MVP — Luồng cốt lõi | Sản phẩm/Kỹ thuật | Dòng thời gian | Commercial timeline | Hiển thị sự kiện bàn giao/liên hệ/theo dõi tiếp/kết quả theo thứ tự thời gian, kèm nguồn và bằng chứng. | P1 | Chưa bắt đầu | 2027-01-13 | 2027-01-20 | 8 | 4.0 | Dòng thời gian thương mại | 2 |  |  |
| 4.9 | 4. Xây dựng MVP — Luồng cốt lõi | Sản phẩm/Kỹ thuật | Thông báo | Thông báo đến hạn/quá hạn cơ bản | Thông báo trong ứng dụng/email cho bàn giao mới và việc theo dõi tiếp đến hạn/quá hạn; chưa mở rộng phức tạp đa kênh. | P1 | Chưa bắt đầu | 2027-01-13 | 2027-01-21 | 9 | 4.0 | Thông báo v0 | 2 |  |  |
| 4.10 | 4. Xây dựng MVP — Luồng cốt lõi | Sản phẩm/Kỹ thuật | Kênh gốc | Thử nghiệm liên tục kênh gốc trong sản phẩm | Nếu API/điều khoản cho phép: dùng link/deep-link hoặc luồng gửi có kiểm soát; nếu không, hiển thị kênh/bối cảnh và chuyển lại Marketing khi cần. | P1 | Chưa bắt đầu | 2027-01-11 | 2027-01-22 | 12 | 4.0 | Liên tục kênh v0 | 2 |  | Feature may be constrained by Pancake permissions/terms. |
| 5.1 | 5. Xây dựng MVP — Đo lường & trí tuệ | Dữ liệu | Phễu | Phễu Quản lý v0 | Hội thoại/Lead/Bàn giao/Đã liên hệ/Đạt chuẩn/Won- Lost: số lượng + tỷ lệ chuyển đổi; phân tách theo Sales/nguồn khi dữ liệu đủ tin cậy. | P0 | Chưa bắt đầu | 2027-01-11 | 2027-01-22 | 12 | 6.0 | Quản lý phễu | 2 |  |  |
| 5.2 | 5. Xây dựng MVP — Đo lường & trí tuệ | Dữ liệu | Phân tích bàn giao | Chỉ số SLA | Số lượng bàn giao, đã nhận/đã liên hệ, trung vị thời gian tới liên hệ đầu tiên, vi phạm, danh sách chưa liên hệ. | P0 | Chưa bắt đầu | 2027-01-13 | 2027-01-22 | 10 | 4.0 | Handoff báo cáo | 2 |  |  |
| 5.3 | 5. Xây dựng MVP — Đo lường & trí tuệ | Dữ liệu | Phân tích theo dõi tiếp | Tuân thủ theo dõi tiếp | Theo dõi việc đến hạn/hoàn thành/quá hạn theo Sales; hiển thị danh sách quá hạn và xu hướng đơn giản. | P1 | Chưa bắt đầu | 2027-01-15 | 2027-01-25 | 11 | 3.0 | Follow-up báo cáo | 2 |  |  |
| 5.4 | 5. Xây dựng MVP — Đo lường & trí tuệ | Dữ liệu | Sức khoẻ dữ liệu | Chỉ số độ bao phủ v0 | Tính % Lead có nguồn, bàn giao, kết quả Sales và doanh thu; phân loại Đã biết/Suy luận/Không biết cho dòng liên kết nguồn. | P0 | Chưa bắt đầu | 2027-01-15 | 2027-01-27 | 13 | 5.0 | Sức khoẻ dữ liệu v0 | 2 |  |  |
| 5.5 | 5. Xây dựng MVP — Đo lường & trí tuệ | Dữ liệu | Liên kết nguồn Meta | Dòng liên kết nguồn Meta v0 | Lưu dòng liên kết campaign/ad có sẵn từ thử nghiệm Pancake/Meta; báo cáo độ bao phủ và phần chưa biết, không tạo độ chính xác giả. | P1 | Chưa bắt đầu | 2027-01-11 | 2027-01-27 | 17 | 6.0 | Liên kết nguồn Meta v0 | 2 |  |  |
| 5.6 | 5. Xây dựng MVP — Đo lường & trí tuệ | AI | Tóm tắt hội thoại | Tóm tắt có bằng chứng v0 | Tạo tóm tắt ngắn về nhu cầu/sản phẩm/phản đối/cam kết; liên kết về bằng chứng; người dùng có thể sửa/đánh dấu. | P1 | Chưa bắt đầu | 2027-01-04 | 2027-01-20 | 17 | 7.0 | Tóm tắt AI v0 | 2 |  |  |
| 5.7 | 5. Xây dựng MVP — Đo lường & trí tuệ | AI | Cam kết | Phát hiện cam kết Khách/Sales | Phát hiện cam kết rõ ràng và gợi ý hạn/hành động; ở Alpha chỉ gợi ý trừ khi đã chứng minh ngưỡng độ tin cậy. | P1 | Chưa bắt đầu | 2027-01-13 | 2027-01-27 | 15 | 6.0 | Gợi ý cam kết v0 | 2 |  |  |
| 5.8 | 5. Xây dựng MVP — Đo lường & trí tuệ | AI | Độ tin cậy | Giao diện bằng chứng/độ tin cậy | Hiển thị bằng chứng, độ tin cậy, tin nhắn nguồn và hành động phản hồi; không tự động thay đổi theo cách khó giải thích. | P1 | Chưa bắt đầu | 2027-01-20 | 2027-01-29 | 10 | 4.0 | AI độ tin cậy UI | 2 |  |  |
| 6.1 | 6. Kiểm thử, bảo mật & sẵn sàng Alpha | Kiểm thử (QA) | Chiến lược kiểm thử | Lập ma trận kiểm thử MVP | Luồng chuẩn + trường hợp biên: Lead trùng, trễ đồng bộ, thiếu số điện thoại, mở lại, sai người phụ trách, nguồn không đầy đủ, sửa Lost/Won. | P0 | Chưa bắt đầu | 2027-01-04 | 2027-01-12 | 9 | 3.0 | Ma trận kiểm thử | 2 |  |  |
| 6.2 | 6. Kiểm thử, bảo mật & sẵn sàng Alpha | Kiểm thử (QA) | Dữ liệu kiểm thử chuẩn | Tạo dữ liệu kiểm thử đại diện | Dữ liệu tổng hợp/ẩn danh cho 5 kịch bản, định danh đa kênh, hội thoại nhiễu, thiếu nguồn. | P0 | Chưa bắt đầu | 2027-01-08 | 2027-01-15 | 8 | 3.0 | Dữ liệu kiểm thử chuẩn | 2 |  |  |
| 6.3 | 6. Kiểm thử, bảo mật & sẵn sàng Alpha | Kiểm thử (QA) | Tích hợp | Kiểm thử lỗi đồng bộ Pancake | Token hết hạn, giới hạn tốc độ, webhook/polling trùng, thiếu tin nhắn, kết nối lại, nạp bù. | P0 | Chưa bắt đầu | 2027-01-18 | 2027-01-29 | 12 | 5.0 | Connector QA báo cáo | 2 |  |  |
| 6.4 | 6. Kiểm thử, bảo mật & sẵn sàng Alpha | Kiểm thử (QA) | Quy trình | Kiểm thử E2E Marketing -> Doanh thu | Tự động/thủ công E2E: hội thoại->lead->handoff- >contact->theo dõi tiếp->Won/Lost->phễu. | P0 | Chưa bắt đầu | 2027-01-20 | 2027-02-02 | 14 | 5.0 | E2E pass báo cáo | 2 |  |  |
| 6.5 | 6. Kiểm thử, bảo mật & sẵn sàng Alpha | Bảo mật | Quyền truy cập | Rà soát RBAC / cách ly khách hàng | Kiểm tra Sales không truy cập Lead/khách hàng khác; hành động quản trị có kiểm toán; giới hạn quyền truy cập bí mật kết nối. | P0 | Chưa bắt đầu | 2027-01-25 | 2027-02-03 | 10 | 3.0 | Danh sách kiểm tra bảo mật | 2 |  |  |
| 6.6 | 6. Kiểm thử, bảo mật & sẵn sàng Alpha | Bảo mật | Quyền riêng tư | Chính sách lưu/xoá dữ liệu ban đầu | Định nghĩa thời hạn lưu dữ liệu Pilot, quy trình xoá, xuất/sao lưu, xử lý dữ liệu nhạy cảm; rà soát pháp lý trước khi dùng dữ liệu khách hàng. | P0 | Chưa bắt đầu | 2027-01-18 | 2027-02-05 | 19 | 3.0 | Chính sách riêng tư/lưu trữ Pilot | 2 |  |  |
| 6.7 | 6. Kiểm thử, bảo mật & sẵn sàng Alpha | Kỹ thuật | Độ ổn định | Sao lưu/khôi phục + giám sát | Sao lưu hàng ngày khi phù hợp, kiểm thử khôi phục, cảnh báo job và trang sức khoẻ kết nối cho nhóm nội bộ. | P1 | Chưa bắt đầu | 2027-01-25 | 2027-02-05 | 12 | 4.0 | Vận hành readiness | 2 |  |  |
| 6.8 | 6. Kiểm thử, bảo mật & sẵn sàng Alpha | Sản phẩm | Thiết lập đo lường | Sự kiện phân tích sản phẩm | Theo dõi kích hoạt, handoff, contact, theo dõi tiếp, kết quả, phản hồi AI, lỗi; avoid chỉ số MAU hình thức. | P1 | Chưa bắt đầu | 2027-01-25 | 2027-02-05 | 12 | 3.0 | Gắn đo lường sử dụng | 2 |  |  |
| 6.9 | 6. Kiểm thử, bảo mật & sẵn sàng Alpha | Thành công KH/Vận hành | Triển khai | Viết sổ tay triển khai Pilot | Khám phá -> hiện trạng -> buổi chốt định nghĩa -> cấu hình -> đào tạo -> theo dõi sát -> rà soát tuần -> tổng kết kinh doanh. | P0 | Chưa bắt đầu | 2027-01-18 | 2027-02-05 | 19 | 4.0 | Sổ tay triển khai | 2 |  |  |
| 6.10 | 6. Kiểm thử, bảo mật & sẵn sàng Alpha | Thành công KH/Vận hành | Đào tạo | Tạo đào tạo theo vai trò | Marketing 30m, Sales 45m, Quản lý 30m; theo tác vụ, không tour tính năng. | P0 | Chưa bắt đầu | 2027-01-25 | 2027-02-08 | 15 | 4.0 | Tài liệu/kịch bản đào tạo | 2 |  |  |
| 6.11 | 6. Kiểm thử, bảo mật & sẵn sàng Alpha | Tiếp cận thị trường (GTM) | Sẵn sàng Pilot | Chọn 3-5 đối tác thiết kế Đợt 1 | Dùng điểm sàng lọc; ký phạm vi/quyền truy cập dữ liệu/cam kết người bảo trợ; ưu tiên cùng ngành nếu có thể. | P0 | Chưa bắt đầu | 2027-01-18 | 2027-02-05 | 19 | 3.0 | Nhóm Pilot Đợt 1 | 2 |  |  |
| 6.12 | 6. Kiểm thử, bảo mật & sẵn sàng Alpha | Tiếp cận thị trường (GTM) | Hợp đồng | Thỏa thuận Pilot / DPA tối thiểu | Phạm vi, trách nhiệm, xử lý dữ liệu, bảo mật thông tin, giới hạn hỗ trợ, phí Pilot nếu áp dụng. | P0 | Chưa bắt đầu | 2027-01-25 | 2027-02-08 | 15 | 3.0 | Mẫu thỏa thuận Pilot | 2 |  |  |

| task_id | phase | workstream | work_group | task | description | priority | status | start_date | deadline | duration_days | effort_person_days | deliverable | source_page | gate_or_milestone |
| --- | --- | --- | --- | --- | --- | --- | --- | --- | --- | --- | --- | --- | --- | --- |
| 6.13 | 6. Kiểm thử, bảo mật & sẵn sàng Alpha | Sản phẩm | Alpha | Tuần dùng thử nội bộ | Nhóm nòng cốt chạy quy trình mô phỏng + nội bộ; ghi lỗi và điểm ma sát hàng ngày. | P0 | Chưa bắt đầu | 2027-02-01 | 2027-02-05 | 5 | 5.0 | Nhật ký lỗi dùng thử nội bộ | 2 |  |
| 6.14 | 6. Kiểm thử, bảo mật & sẵn sàng Alpha | Sản phẩm | Quyết định qua cổng | Cổng 3: Sẵn sàng Alpha? | Cho Pilot chạy nếu E2E P0 đạt, không có lỗi bảo mật nghiêm trọng, sổ tay/đào tạo sẵn sàng và kết nối đủ ổn định. | P0 | Chưa bắt đầu | 2027-02-12 | 2027-02-12 | 1 | 1.0 | Quyết định Alpha đi/không đi | 2 | Cổng 3 - 12/02 |
| 7.1 | 7. Pilot với đối tác thiết kế — Đợt 1 | Triển khai | Chuẩn bị Pilot | Khởi động + lập bản đồ quy trình từng đối tác | Lập bản đồ thu hút khách -> Pancake -> bàn giao -> Sales - > kết quả; xác định điểm khác so với chuẩn. | P0 | Chưa bắt đầu | 2027-02-15 | 2027-02-19 | 5 | 5.0 | Hiện tại-trạng thái maps | 2 |  |
| 7.2 | 7. Pilot với đối tác thiết kế — Đợt 1 | Triển khai | Đo hiện trạng | Chỉ số hiện trạng từng đối tác | Số lượng Lead, thời gian liên hệ đầu tiên, mất mát bàn giao, theo dõi tiếp, độ bao phủ kết quả, công sức báo cáo trước Pilot. | P0 | Chưa bắt đầu | 2027-02-15 | 2027-02-19 | 5 | 3.0 | Bảng điểm hiện trạng | 2 |  |
| 7.3 | 7. Pilot với đối tác thiết kế — Đợt 1 | Triển khai | Định nghĩa nghiệp vụ | Buổi chốt định nghĩa doanh thu | Thống nhất Lead/Đạt chuẩn/Không liên hệ được/Won/Lost/Doanh thu/SLA; ghi lại ngoại lệ. | P0 | Chưa bắt đầu | 2027-02-16 | 2027-02-19 | 4 | 4.0 | Hợp đồng dữ liệu khách hàng | 2 |  |
| 7.4 | 7. Pilot với đối tác thiết kế — Đợt 1 | Triển khai | Thiết lập | Kết nối Pancake + cấu hình không gian khách hàng | Tạo thủ công, người dùng/vai trò, định nghĩa đo lường, ánh xạ nguồn, kiểm tra sức khoẻ dữ liệu. | P0 | Chưa bắt đầu | 2027-02-17 | 2027-02-22 | 6 | 4.0 | Không gian làm việc đã cấu hình | 2 |  |
| 7.5 | 7. Pilot với đối tác thiết kế — Đợt 1 | Triển khai | Đào tạo | Đào tạo Marketing / Sales / Quản lý | Đào tạo theo vai trò, hoàn thành 1 luồng Lead thật, ghi lại điểm gây khó hiểu. | P0 | Chưa bắt đầu | 2027-02-22 | 2027-02-24 | 3 | 4.0 | Trained pilot người dùng | 2 |  |
| 7.6 | 7. Pilot với đối tác thiết kế — Đợt 1 | Triển khai | Vận hành thật | Đợt 1 vận hành thật | Bắt đầu xử lý Lead thật; hỗ trợ hàng ngày trong tuần đầu; nhóm sản phẩm theo dõi chỉ số trọng yếu. | P0 | Chưa bắt đầu | 2027-02-24 | 2027-02-24 | 1 | 1.0 | Pilot vận hành thật | 2 | Mốc: Đợt 1 vận hành thật |
| 7.7 | 7. Pilot với đối tác thiết kế — Đợt 1 | Thành công KH/Vận hành | Theo dõi sát | Theo dõi sát tuần 1 | Quan sát hành vi bàn giao/liên hệ/kết quả; không chỉ dựa vào yêu cầu tính năng; ghi cách xử lý tạm và khoảng trống dữ liệu. | P0 | Chưa bắt đầu | 2027-02-24 | 2027-03-03 | 8 | 5.0 | Theo dõi thực tế findings | 2 |  |
| 7.8 | 7. Pilot với đối tác thiết kế — Đợt 1 | Kỹ thuật | Hỗ trợ Pilot | Sửa lỗi P0/P1 của Pilot | Phân loại hàng ngày; chỉ hotfix lỗi nghiêm trọng; tránh để nhóm bị kéo vào yêu cầu tuỳ biến trừ khi đó là trở ngại lặp lại. | P0 | Chưa bắt đầu | 2027-02-24 | 2027-03-12 | 17 | 8.0 | Các bản vá ổn định Pilot | 3 |  |
| 7.9 | 7. Pilot với đối tác thiết kế — Đợt 1 | Thành công KH/Vận hành | Rà soát hàng tuần | Rà soát doanh thu hàng tuần #1-#4 | Rà soát Lead/bàn giao/liên hệ/theo dõi tiếp/kết quả/sức khoẻ dữ liệu + điểm rơi rớt lớn nhất; ghi lại quyết định khách hàng. | P0 | Chưa bắt đầu | 2027-03-01 | 2027-03-26 | 26 | 8.0 | 4 ghi chép rà soát tuần | 3 |  |
| 7.10 | 7. Pilot với đối tác thiết kế — Đợt 1 | Nghiên cứu | Mức độ sử dụng | Đo mức sử dụng & hành vi | % Lead đi qua sản phẩm, Sales thực sự xử lý, độ bao phủ kết quả, mức hoàn thành theo dõi tiếp, mẫu lách quy trình. | P0 | Chưa bắt đầu | 2027-03-01 | 2027-03-26 | 26 | 4.0 | Mức sử dụng dashboard | 3 |  |
| 7.11 | 7. Pilot với đối tác thiết kế — Đợt 1 | Nghiên cứu | Giá trị | Đo tác động kinh doanh | So sánh hiện trạng với Pilot: liên hệ đầu tiên, chưa liên hệ, quá hạn, thời gian quản lý làm báo cáo, Lead thu hồi có bằng chứng. | P0 | Chưa bắt đầu | 2027-03-15 | 2027-03-31 | 17 | 4.0 | Phân tích tác động Pilot | 3 |  |
| 7.12 | 7. Pilot với đối tác thiết kế — Đợt 1 | Sản phẩm | Khả năng lặp lại | Theo dõi phần chuẩn vs tuỳ biến theo đối tác | Mỗi phân loại điểm khác: mẫu theo ngành, cấu hình, riêng lẻ, thiếu lõi thật. | P0 | Chưa bắt đầu | 2027-02-24 | 2027-03-31 | 36 | 4.0 | Ma trận khả năng lặp lại | 3 |  |
| 7.13 | 7. Pilot với đối tác thiết kế — Đợt 1 | Tiếp cận thị trường (GTM) | Thương mại | Kiểm tra gia hạn/tiếp tục trả phí | Thảo luận giá trị, mức sẵn sàng chi trả, phí triển khai và mô hình định kỳ trước khi Pilot kết thúc; ghi lại phản đối. | P0 | Chưa bắt đầu | 2027-03-22 | 2027-04-01 | 11 | 3.0 | Commercial bằng chứng | 3 |  |
| 7.14 | 7. Pilot với đối tác thiết kế — Đợt 1 | Sản phẩm | Tổng kết kinh doanh | Tổng kết kinh doanh Đợt 1 | Trình bày trước/sau, lưu ý về sức khoẻ dữ liệu, giá trị thu hồi, mức sử dụng, trở ngại chưa giải quyết và trích dẫn/quyết định của khách hàng. | P0 | Chưa bắt đầu | 2027-04-01 | 2027-04-02 | 2 | 3.0 | Tổng kết kinh doanh Đợt 1 | 3 | Cổng 4 - 02/04 |
| 7.15 | 7. Pilot với đối tác thiết kế — Đợt 1 | Sản phẩm | Quyết định qua cổng | Cổng 4: giá trị có lặp lại? | Quyết định tiếp tục/thu hẹp/chuyên sâu theo ngành. Gợi ý đạt: 3+ đối tác cho thấy giá trị rõ, quy trình phần lớn lặp lại, công sức triển khai giảm và người bảo trợ sẵn sàng trả tiền/tiếp tục. | P0 | Chưa bắt đầu | 2027-04-02 | 2027-04-02 | 1 | 1.0 | Quyết định Đợt 2 | 3 | Cổng 4 - 02/04 |
| 8.1 | 8. Chuẩn hoá sản phẩm v0.2 | Sản phẩm | Tổng hợp nghiên cứu | Tổng hợp bài học Đợt 1 | Xếp hạng trở ngại lặp lại/yếu tố tạo giá trị; loại yêu cầu đơn lẻ; cập nhật ICP và nguyên tắc sản phẩm. | P0 | Chưa bắt đầu | 2027-04-05 | 2027-04-07 | 3 | 2.0 | Bản ghi nhớ bài học | 3 |  |
| 8.2 | 8. Chuẩn hoá sản phẩm v0.2 | Sản phẩm | Phạm vi | Xác định thay đổi v0.2 | Chỉ thay đổi những gì giúp tăng khả năng lặp lại, giảm thời gian triển khai, tăng chất lượng dữ liệu hoặc giá trị cốt lõi. | P0 | Chưa bắt đầu | 2027-04-07 | 2027-04-08 | 2 | 1.0 | v0.2 phạm vi | 3 |  |
| 8.3 | 8. Chuẩn hoá sản phẩm v0.2 | Kỹ thuật | Hướng dẫn triển khai ban đầu | Công cụ thiết lập nội bộ | Giảm công việc thủ công khi tạo tổ chức/người dùng/kết nối/cấu hình; chưa có tự phục vụ công khai. | P1 | Chưa bắt đầu | 2027-04-05 | 2027-04-16 | 12 | 5.0 | Công cụ cấu hình v0.2 | 3 |  |
| 8.4 | 8. Chuẩn hoá sản phẩm v0.2 | Sản phẩm/Kỹ thuật | Chất lượng dữ liệu | Sửa 3 khoảng trống lớn nhất về dòng liên kết nguồn/sức khoẻ dữ liệu | Ưu tiên lỗi thiếu nguồn/kết quả/trùng lặp quan sát được trong Pilot. | P0 | Chưa bắt đầu | 2027-04-05 | 2027-04-16 | 12 | 6.0 | Cải thiện sức khoẻ dữ liệu | 3 |  |
| 8.5 | 8. Chuẩn hoá sản phẩm v0.2 | Sản phẩm/Kỹ thuật | Mức độ sử dụng | Sửa 3 điểm ma sát lớn nhất của Sales | Giảm số thao tác, cải thiện hàng đợi/bối cảnh, làm rõ trạng thái; dựa trên hành vi quan sát, không chỉ yêu cầu. | P0 | Chưa bắt đầu | 2027-04-05 | 2027-04-16 | 12 | 6.0 | Trải nghiệm Sales v0.2 | 3 |  |
| 8.6 | 8. Chuẩn hoá sản phẩm v0.2 | Thành công KH/Vận hành | Triển khai | Chuẩn hoá gói triển khai | Mẫu cho khởi động, định nghĩa, thiết lập, đào tạo, rà soát tuần; đo số giờ-người triển khai. | P0 | Chưa bắt đầu | 2027-04-05 | 2027-04-14 | 10 | 4.0 | Bộ triển khai v1 | 3 |  |
| 8.7 | 8. Chuẩn hoá sản phẩm v0.2 | Tiếp cận thị trường (GTM) | Gói chào bán | Hoàn thiện gói Pilot trả phí | Dùng bằng chứng Đợt 1 để viết lại điều kiện sàng lọc, phạm vi, khoảng giá, tiêu chí thành công và loại trừ. | P0 | Chưa bắt đầu | 2027-04-05 | 2027-04-09 | 5 | 2.0 | Gói Pilot trả phí v1 | 3 |  |
| 9.1 | 9. Pilot trả phí — Đợt 2 | Tiếp cận thị trường (GTM) | Danh sách cơ hội bán hàng | Tuyển 5-10 khách tiềm năng cho Pilot trả phí | Ưu tiên cùng ICP/ngành; sàng lọc bằng bảng chấm điểm chuẩn; không nhận dự án CRM riêng. | P0 | Chưa bắt đầu | 2027-04-05 | 2027-04-23 | 19 | 5.0 | Danh sách cơ hội Đợt 2 | 3 |  |
| 9.2 | 9. Pilot trả phí — Đợt 2 | Tiếp cận thị trường (GTM) | Sales | Thực hiện khám phá/demo chuẩn | Dùng demo theo quy trình vấn đề; ghi lại độ dài chu kỳ bán và phản đối; tránh bán theo danh sách tính năng. | P0 | Chưa bắt đầu | 2027-04-12 | 2027-04-30 | 19 | 5.0 | Ghi chép khám phá/demo | 3 |  |
| 9.3 | 9. Pilot trả phí — Đợt 2 | Tiếp cận thị trường (GTM) | Thương mại | Chốt 5+ Pilot trả phí | Kiểm tra phí Pilot + đề xuất phí định kỳ; chấp nhận hoá đơn/hợp đồng thủ công. | P0 | Chưa bắt đầu | 2027-04-19 | 2027-05-07 | 19 | 4.0 | Hợp đồng Pilot trả phí | 3 |  |
| 9.4 | 9. Pilot trả phí — Đợt 2 | Triển khai | Hướng dẫn triển khai ban đầu | Triển khai Đợt 2 bằng sổ tay chuẩn | Theo dõi giờ theo khách, điểm khác và thời gian tới giá trị; nhóm không được tuỳ biến không giới hạn. | P0 | Chưa bắt đầu | 2027-04-26 | 2027-05-14 | 19 | 10.0 | Các lần vận hành thật Đợt 2 | 3 |  |
| 9.5 | 9. Pilot trả phí — Đợt 2 | Đo lường | Hiệu quả kinh tế | Theo dõi hiệu quả kinh tế triển khai/hỗ trợ | Giờ thiết lập, yêu cầu hỗ trợ, chi phí hạ tầng/AI, quy mô khách hàng, doanh thu; so với mô hình mục tiêu. | P0 | Chưa bắt đầu | 2027-04-26 | 2027-05-21 | 26 | 3.0 | Hiệu quả kinh tế triển khai | 3 |  |
| 9.6 | 9. Pilot trả phí — Đợt 2 | Đo lường | Duy trì sử dụng/Giá trị | Theo dõi chỉ báo sớm về mức sử dụng/giá trị trong 30 ngày | Mức sử dụng, độ bao phủ kết quả, tỷ lệ tuân thủ theo dõi tiếp, mức sử dụng hàng tuần của quản lý và mức sẵn sàng tiếp tục. | P0 | Chưa bắt đầu | 2027-05-03 | 2027-05-28 | 26 | 4.0 | Bảng theo dõi giá trị Đợt 2 | 3 |  |
| 9.7 | 9. Pilot trả phí — Đợt 2 | Sản phẩm | Khả năng lặp lại | Cập nhật ma trận khả năng lặp lại | Mục tiêu cần biết: >=70-80% quy trình có thể chuẩn hoá; xác định mẫu theo ngành và thay đổi lõi. | P0 | Chưa bắt đầu | 2027-05-17 | 2027-05-28 | 12 | 3.0 | Khả năng lặp lại v2 | 3 |  |
| 10.1 | 10. Sẵn sàng thương mại | Chiến lược | ICP | Chốt ICP v1 cho ra mắt giới hạn | Định nghĩa rõ khách nào được bán và điều kiện loại trừ dựa trên bằng chứng Đợt 1+2. | P0 | Chưa bắt đầu | 2027-05-24 | 2027-05-28 | 5 | 1.5 | ICP v1 | 3 |  |
| 10.2 | 10. Sẵn sàng thương mại | Tiếp cận thị trường (GTM) | Định vị | Chốt định vị/thông điệp v1 | Định vị theo vấn đề; nội bộ có thể giữ tên Revenue Continuity, còn thông điệp công khai phải cụ thể. | P1 | Chưa bắt đầu | 2027-05-24 | 2027-05-31 | 8 | 2.0 | Thông điệp v1 | 3 |  |
| 10.3 | 10. Sẵn sàng thương mại | Tiếp cận thị trường (GTM) | Định giá | Chốt gói/định giá v1 | Quyết định phí triển khai + phí nền tảng/phí theo mức sử dụng định kỳ; không mặc định theo seat nếu chưa có bằng chứng. | P0 | Chưa bắt đầu | 2027-05-24 | 2027-06-02 | 10 | 2.0 | Định giá v1 | 3 |  |
| 10.4 | 10. Sẵn sàng thương mại | Tiếp cận thị trường (GTM) | Trang web | Trang giới thiệu + CTA đăng ký | Ban đầu không tự đăng ký; Đặt lịch rà soát quy trình / Đăng ký Pilot; nêu điều kiện phù hợp và bằng chứng tình huống. | P1 | Chưa bắt đầu | 2027-05-31 | 2027-06-07 | 8 | 4.0 | Trang giới thiệu ra mắt | 3 |  |
| 10.5 | 10. Sẵn sàng thương mại | Tiếp cận thị trường (GTM) | Tài liệu hỗ trợ Sales | Kịch bản demo + xử lý phản đối | Vì sao không chỉ dùng CRM/Pancake/Excel+n8n; lưu ý về độ chính xác dữ liệu; kỳ vọng triển khai. | P1 | Chưa bắt đầu | 2027-05-31 | 2027-06-07 | 8 | 3.0 | Sổ tay Sales v1 | 3 |  |
| 10.6 | 10. Sẵn sàng thương mại | Thành công KH/Vận hành | Hỗ trợ | Chính sách hỗ trợ & chuyển cấp | Định nghĩa kênh, mức nghiêm trọng, mục tiêu phản hồi, luồng sự cố kết nối và trách nhiệm khách hàng. | P0 | Chưa bắt đầu | 2027-05-24 | 2027-06-02 | 10 | 2.0 | Chính sách hỗ trợ | 3 |  |
| 10.7 | 10. Sẵn sàng thương mại | Thành công KH/Vận hành | Thành công khách hàng | Chương trình triển khai & sử dụng 30 ngày | Các mốc chuẩn từ khởi động đến tổng kết kinh doanh đầu tiên; định nghĩa chỉ số sức khoẻ. | P1 | Chưa bắt đầu | 2027-05-24 | 2027-06-04 | 12 | 3.0 | Sổ tay Thành công KH v1 | 3 |  |
| 10.8 | 10. Sẵn sàng thương mại | Pháp lý/Bảo mật | Pháp lý thương mại | Điều khoản / Quyền riêng tư / DPA ban đầu | Rà soát xử lý dữ liệu khách hàng, sử dụng AI, nhà xử lý phụ, lưu/xoá dữ liệu và trách nhiệm kết nối. | P0 | Chưa bắt đầu | 2027-05-17 | 2027-06-04 | 19 | 4.0 | Bộ pháp lý thương mại | 3 |  |
| 10.9 | 10. Sẵn sàng thương mại | Bảo mật | Sẵn sàng bảo mật | Danh sách kiểm tra bảo mật cho v1 thương mại | Cách ly khách hàng, lưu thông tin xác thực, kiểm toán, sao lưu, ứng phó sự cố, rà soát quyền truy cập; ghi rõ giới hạn đã biết. | P0 | Chưa bắt đầu | 2027-05-17 | 2027-06-04 | 19 | 4.0 | Security readiness báo cáo | 3 |  |
| 10.10 | 10. Sẵn sàng thương mại | Tài chính/Vận hành | Thanh toán | Quy trình thanh toán/hóa đơn thủ công | Định nghĩa lịch hợp đồng/hóa đơn/gia hạn; chưa cần hệ thống thanh toán tự phục vụ. | P1 | Chưa bắt đầu | 2027-05-31 | 2027-06-04 | 5 | 1.5 | Quy trình thanh toán | 3 |  |
| 10.11 | 10. Sẵn sàng thương mại | Sản phẩm | Phát hành | Đóng phạm vi v1 | Đóng phạm vi ra mắt giới hạn; tạo danh sách việc sau ra mắt; không thêm tính năng tuỳ biến muộn. | P0 | Chưa bắt đầu | 2027-06-01 | 2027-06-03 | 3 | 1.0 | v1 release phạm vi | 3 |  |
| 10.12 | 10. Sẵn sàng thương mại | Chiến lược | Quyết định qua cổng | Cổng 5: Sẵn sàng thương mại? | Đạt nếu giá trị lặp lại, khách sẵn sàng trả phí, hiệu quả kinh tế triển khai chấp nhận được, độ tin cậy dữ liệu/bảo mật đủ mức và sổ tay hỗ trợ sẵn sàng. | P0 | Chưa bắt đầu | 2027-06-04 | 2027-06-04 | 1 | 1.0 | Ra mắt giới hạn decision | 3 | Cổng 5 - 04/06 |
| 11.1 | 11. Ra mắt thương mại giới hạn & ổn định | Phát hành/Triển khai | Phát hành | Bản ứng viên phát hành v1 | Phát hành bản v1 có đánh dấu phiên bản, kế hoạch chuyển đổi/hoàn tác, kiểm thử nhanh và ngưỡng giám sát. | P0 | Chưa bắt đầu | 2027-06-07 | 2027-06-11 | 5 | 3.0 | Bản ứng viên phát hành v1 (RC) | 3 |  |
| 11.2 | 11. Ra mắt thương mại giới hạn & ổn định | Phát hành/Triển khai | Ra mắt | Ra mắt giới hạn | Chỉ mở bán cho ICP đạt chuẩn; mặc định vẫn tạo tài khoản thủ công + triển khai có hướng dẫn. | P0 | Chưa bắt đầu | 2027-06-14 | 2027-06-14 | 1 | 1.0 | v1 thương mại giới hạn | 3 | Mốc: 14/06/2027 |
| 11.3 | 11. Ra mắt thương mại giới hạn & ổn định | Thành công KH/Vận hành | Ổn định hệ thống | Phân loại vấn đề ra mắt hàng ngày — 2 tuần đầu | Rà soát sự cố, kích hoạt, sức khoẻ kết nối, hỗ trợ, độ bao phủ dữ liệu; chỉ ưu tiên P0/P1. | P0 | Chưa bắt đầu | 2027-06-14 | 2027-06-25 | 12 | 6.0 | Nhật ký xử lý sự cố khi ra mắt | 3 |  |
| 11.4 | 11. Ra mắt thương mại giới hạn & ổn định | Đo lường | Chỉ số ra mắt | Theo dõi chỉ số nhóm ra mắt | Danh sách cơ hội đạt chuẩn, tỷ lệ chốt, giờ triển khai ban đầu, kích hoạt, độ bao phủ kết quả, mức sử dụng hàng tuần của quản lý, gánh nặng hỗ trợ. | P0 | Chưa bắt đầu | 2027-06-14 | 2027-06-30 | 17 | 3.0 | Bảng theo dõi nhóm ra mắt | 3 |  |
| 11.5 | 11. Ra mắt thương mại giới hạn & ổn định | Sản phẩm | Bài học | Danh sách bài học 30 ngày | Ghi lại ma sát lặp lại, khoảng trống sản phẩm, phản đối GTM và đầu việc triển khai; gắn nhãn Lõi/Theo ngành/Riêng lẻ. | P1 | Chưa bắt đầu | 2027-06-14 | 2027-06-30 | 17 | 2.0 | Danh sách việc sau ra mắt | 3 |  |
| 11.6 | 11. Ra mắt thương mại giới hạn & ổn định | Chiến lược | Giai đoạn tiếp theo | Quyết định hướng mở rộng | Rà soát cuối tháng 6: tiếp tục bán có Sales dẫn dắt, chuyên sâu hơn theo ngành, thêm kết nối nguồn thu hút khách, đầu tư tự phục vụ hoặc lùi lại theo bằng chứng. | P0 | Chưa bắt đầu | 2027-06-30 | 2027-06-30 | 1 | 1.0 | Quyết định chiến lược nửa cuối 2027 | 4 | Mốc: Rà soát tháng 6 |
